# Bouwplanning v1.0

How a schedule from an IFC model changed from version to version. A marks actual dates.

## Version 1 (saved 2026-07-28)

Note of the change: Merge remote-tracking branch 'origin/main' into claude/dialog-release-updates-599bea

| ID | Task | Duration | Start | Finish | Predecessors | Total float |
| --- | --- | --- | --- | --- | --- | --- |
| 1 | **1. Voorbereiding** | 5d | 2027-03-01 | 2027-03-16 |  | 0d |
| 1.1 | Inventarisatie asbest | 3d | 2027-03-01 | 2027-03-03 |  | 0d |
| 1.2 | Tijdelijke huisvesting inrichten | 5d | 2027-03-04 | 2027-03-10 | 1.1 | 103d |
| 1.3 | Bouwplaats inrichten | 3d | 2027-03-11 | 2027-03-15 | 1.2 | 103d |
| 1.4 | Start renovatie | 0d | 2027-03-16 | 2027-03-16 | 1.3 | 103d |
| 2 | **2. Sloop & Strippen** | 5d | 2027-03-09 | 2027-04-15 |  | 0d |
| 2.1 | Asbestsanering | 5d | 2027-03-09 | 2027-03-15 | 1.1 SS+6d | 0d |
| 2.2 | Strippen interieur | 8d | 2027-03-16 | 2027-03-25 | 2.1 | 83d |
| 2.3 | Sloop binnenwanden | 5d | 2027-03-30 | 2027-04-05 | 2.2 | 83d |
| 2.4 | Dakbedekking verwijderen | 5d | 2027-04-06 | 2027-04-12 | 2.3 | 83d |
| 2.5 | Kozijnen verwijderen | 3d | 2027-04-13 | 2027-04-15 | 2.4 | 83d |
| 3 | **3. Constructief** | 5d | 2027-03-11 | 2027-04-29 |  | 0d |
| 3.1 | Funderingsherstel | 5d | 2027-03-11 | 2027-03-17 | 2.1 SS | 0d |
| 3.2 | Staalconstructie versterking | 8d | 2027-03-18 | 2027-03-31 | 3.1 | 0d |
| 3.3 | Nieuwe dakconstructie | 10d | 2027-04-01 | 2027-04-14 | 3.2 | 0d |
| 3.4 | Uitbreiding metselwerk | 10d | 2027-04-15 | 2027-04-29 | 3.3 | 0d |
| 4 | **4. Gevel & Dak** | 5d | 2027-04-20 | 2027-05-31 |  | 0d |
| 4.1 | Gevelisolatie buitenzijde | 10d | 2027-04-20 | 2027-05-04 | 3.4 FS-7d | 0d |
| 4.2 | Nieuwe kozijnen HR++ | 8d | 2027-05-07 | 2027-05-19 | 4.1 | 0d |
| 4.3 | Dakisolatie en dakbedekking | 8d | 2027-05-20 | 2027-05-31 | 4.2, 3.4 FF+2d | 0d |
| 4.4 | Wind- en waterdicht | 0d | 2027-05-31 | 2027-05-31 | 4.3 | 55d |
| 5 | **5. Installaties** | 5d | 2027-06-01 | 2027-07-08 |  | 0d |
| 5.1 | Elektra vernieuwen | 8d | 2027-06-01 | 2027-06-10 | 4.3 | 0d |
| 5.2 | Warmtepomp installeren | 5d | 2027-06-11 | 2027-06-17 | 5.1 | 27d |
| 5.3 | Vloerverwarming | 8d | 2027-06-15 | 2027-06-24 | 5.2 SS+2d | 27d |
| 5.4 | Ventilatie WTW | 5d | 2027-06-25 | 2027-07-01 | 5.3 | 27d |
| 5.5 | Zonnepanelen | 5d | 2027-07-02 | 2027-07-08 | 5.4 | 27d |
| 6 | **6. Afbouw** | 5d | 2027-06-23 | 2027-08-23 |  | 0d |
| 6.1 | Binnenwanden plaatsen | 8d | 2027-06-23 | 2027-07-02 | 5.1 SS+16d | 0d |
| 6.2 | Plafonds | 5d | 2027-07-05 | 2027-07-09 | 6.1 | 0d |
| 6.3 | Vloerafwerking | 5d | 2027-07-12 | 2027-07-16 | 6.2 | 0d |
| 6.4 | Schilderwerk | 8d | 2027-07-19 | 2027-08-18 | 6.3 | 0d |
| 6.5 | Sanitair | 3d | 2027-08-19 | 2027-08-23 | 6.4 | 0d |
| 7 | **7. Oplevering** | 5d | 2027-08-24 | 2027-09-06 |  | 0d |
| 7.1 | Inrichting lokalen | 5d | 2027-08-24 | 2027-08-30 | 6.5 | 0d |
| 7.2 | Buitenterrein | 5d | 2027-08-31 | 2027-09-06 | 7.1 | 0d |
| 7.3 | Oplevering | 0d | 2027-09-06 | 2027-09-06 | 7.2 | 0d |

## Version 2 (saved 2026-07-28)

Note of the change: feat(examples): voorbeeldprojecten, showcases en demobibliotheek in het Engels (#39)

Last finish stays 2027-09-06.

Changed:

| ID | Task | Other |
| --- | --- | --- |
| 1 | **1. Preparation** | was named 1. Voorbereiding |
| 1.1 | Asbestos survey | was named Inventarisatie asbest |
| 1.2 | Set up temporary accommodation | was named Tijdelijke huisvesting inrichten |
| 1.3 | Set up site | was named Bouwplaats inrichten |
| 1.4 | Start of renovation | was named Start renovatie |
| 2 | **2. Demolition & strip-out** | was named 2. Sloop & Strippen |
| 2.1 | Asbestos removal | was named Asbestsanering |
| 2.2 | Strip out interior | was named Strippen interieur |
| 2.3 | Demolish internal walls | was named Sloop binnenwanden |
| 2.4 | Remove roofing | was named Dakbedekking verwijderen |
| 2.5 | Remove window frames | was named Kozijnen verwijderen |
| 3 | **3. Structural works** | was named 3. Constructief |
| 3.1 | Foundation repair | was named Funderingsherstel |
| 3.2 | Structural steel strengthening | was named Staalconstructie versterking |
| 3.3 | New roof structure | was named Nieuwe dakconstructie |
| 3.4 | Extension masonry | was named Uitbreiding metselwerk |
| 4 | **4. Facade & roof** | was named 4. Gevel & Dak |
| 4.1 | External facade insulation | was named Gevelisolatie buitenzijde |
| 4.2 | New HR++ window frames | was named Nieuwe kozijnen HR++ |
| 4.3 | Roof insulation and roofing | was named Dakisolatie en dakbedekking |
| 4.4 | Wind and weathertight | was named Wind- en waterdicht |
| 5 | **5. Building services** | was named 5. Installaties |
| 5.1 | Renew electrical installation | was named Elektra vernieuwen |
| 5.2 | Install heat pump | was named Warmtepomp installeren |
| 5.3 | Underfloor heating | was named Vloerverwarming |
| 5.4 | Heat recovery ventilation | was named Ventilatie WTW |
| 5.5 | Solar panels | was named Zonnepanelen |
| 6 | **6. Fit-out** | was named 6. Afbouw |
| 6.1 | Install internal walls | was named Binnenwanden plaatsen |
| 6.2 | Ceilings | was named Plafonds |
| 6.3 | Floor finishes | was named Vloerafwerking |
| 6.4 | Painting | was named Schilderwerk |
| 6.5 | Sanitary fittings | was named Sanitair |
| 7 | **7. Handover** | was named 7. Oplevering |
| 7.1 | Classroom furnishing | was named Inrichting lokalen |
| 7.2 | External areas | was named Buitenterrein |
| 7.3 | Handover | was named Oplevering |
