# Bouwplanning v1.0

How a schedule from an IFC model changed from version to version. A marks actual dates.

## Version 1 (saved 2026-07-28)

Note of the change: feat(examples): voorbeeldprojecten, showcases en demobibliotheek in het Engels (#39)

| ID | Task | Duration | Start | Finish | Predecessors | Total float |
| --- | --- | --- | --- | --- | --- | --- |
| 1 | **1. Preparation** | 5d | 2027-03-01 | 2027-03-30 |  | 0d |
| 1.1 | Set up site | 8d | 2027-03-01 | 2027-03-10 |  | 0d |
| 1.2 | Stakeholder management | 5d | 2027-03-11 | 2027-03-17 | 1.1 | 265d |
| 1.3 | Traffic management | 3d | 2027-03-18 | 2027-03-22 | 1.2 | 265d |
| 1.4 | Piezometer monitoring | 3d | 2027-03-23 | 2027-03-25 | 1.3 | 265d |
| 1.5 | Start of construction | 0d | 2027-03-30 | 2027-03-30 | 1.4 | 265d |
| 2 | **2. Earthworks & foundations** | 5d | 2027-03-15 | 2027-09-09 |  | 0d |
| 2.1 | Sheet pile sections | 15d | 2027-03-15 | 2027-04-06 | 1.1 SS+10d | 0d |
| 2.2 | Wellpoint dewatering | 5d | 2027-04-07 | 2027-04-13 | 2.1 | 167d |
| 2.3 | Excavate to level -2 | 12d | 2027-04-14 | 2027-04-30 | 2.2 | 167d |
| 2.4 | Excavate to level -1 | 10d | 2027-05-03 | 2027-05-19 | 2.3 | 167d |
| 2.5 | Bore foundation piles | 20d | 2027-05-20 | 2027-06-16 | 2.4 | 167d |
| 2.6 | Foundation beams | 10d | 2027-06-17 | 2027-06-30 | 2.5 | 167d |
| 2.7 | Basement floor P2 | 8d | 2027-07-01 | 2027-07-12 | 2.6 | 167d |
| 2.8 | Basement floor P1 | 8d | 2027-07-13 | 2027-07-22 | 2.7 | 167d |
| 2.9 | Pour basement walls | 12d | 2027-07-23 | 2027-08-30 | 2.8 | 167d |
| 2.10 | Basement waterproofing | 8d | 2027-08-31 | 2027-09-09 | 2.9 | 167d |
| 3 | **3. Structural works** | 5d | 2027-03-23 | 2027-09-08 |  | 0d |
| 3.1 | Ground floor columns & slab | 10d | 2027-03-23 | 2027-04-07 | 2.1 SS | 0d |
| 3.2 | Floor 1 structural works | 8d | 2027-04-08 | 2027-04-19 | 3.1 | 0d |
| 3.3 | Floor 2 structural works | 8d | 2027-04-20 | 2027-04-30 | 3.2 | 0d |
| 3.4 | Floor 3 structural works | 8d | 2027-05-03 | 2027-05-14 | 3.3 | 0d |
| 3.5 | Floor 4 structural works | 8d | 2027-05-18 | 2027-05-27 | 3.4 | 0d |
| 3.6 | Floor 5 structural works | 8d | 2027-05-28 | 2027-06-08 | 3.5 | 0d |
| 3.7 | Floor 6 structural works | 8d | 2027-06-09 | 2027-06-18 | 3.6 | 0d |
| 3.8 | Floor 7 structural works | 8d | 2027-06-21 | 2027-06-30 | 3.7 | 0d |
| 3.9 | Floor 8 structural works | 8d | 2027-07-01 | 2027-07-12 | 3.8 | 0d |
| 3.10 | Concrete stair and lift core | 20d | 2027-07-08 | 2027-08-25 | 3.9 SS+5d | 0d |
| 3.11 | Steel roof structure | 10d | 2027-08-26 | 2027-09-08 | 3.10 | 0d |
| 3.12 | Topping out | 0d | 2027-09-08 | 2027-09-08 | 3.11 | 168d |
| 4 | **4. Facade** | 5d | 2027-07-21 | 2027-10-21 |  | 0d |
| 4.1 | Curtain wall installation, phase 1 | 15d | 2027-07-21 | 2027-08-31 | 3.11 FS-21d | 0d |
| 4.2 | Curtain wall installation, phase 2 | 15d | 2027-09-01 | 2027-09-21 | 4.1 | 0d |
| 4.3 | Curtain wall installation, phase 3 | 12d | 2027-09-22 | 2027-10-07 | 4.2 | 0d |
| 4.4 | Roof finishes and services | 10d | 2027-10-08 | 2027-10-21 | 4.3, 3.11 FF+2d | 0d |
| 4.5 | Wind and weathertight | 0d | 2027-10-21 | 2027-10-21 | 4.4 | 137d |
| 5 | **5. Building services** | 5d | 2027-10-22 | 2028-02-22 |  | 0d |
| 5.1 | Main electrical switchroom | 10d | 2027-10-22 | 2027-11-04 | 4.4 | 0d |
| 5.2 | Risers, electrical | 12d | 2027-11-05 | 2027-11-22 | 5.1 | 49d |
| 5.3 | Risers, mechanical services | 12d | 2027-11-10 | 2027-11-25 | 5.2 SS+3d | 49d |
| 5.4 | Air handling units | 10d | 2027-11-26 | 2027-12-09 | 5.3 | 49d |
| 5.5 | Ventilation ductwork | 15d | 2027-12-10 | 2027-12-30 | 5.4 | 49d |
| 5.6 | Sprinkler installation | 10d | 2027-12-31 | 2028-01-13 | 5.5 | 49d |
| 5.7 | Lift installation | 20d | 2028-01-14 | 2028-02-10 | 5.6 | 49d |
| 5.8 | BMS/building management | 8d | 2028-02-11 | 2028-02-22 | 5.7 | 49d |
| 6 | **6. Fit-out** | 5d | 2027-12-30 | 2028-03-22 |  | 0d |
| 6.1 | Office system partitions | 15d | 2027-12-30 | 2028-01-19 | 5.1 SS+49d | 0d |
| 6.2 | Suspended ceilings | 12d | 2028-01-20 | 2028-02-04 | 6.1 | 0d |
| 6.3 | Raised floors | 10d | 2028-02-07 | 2028-02-18 | 6.2 | 0d |
| 6.4 | Sanitary rooms | 8d | 2028-02-21 | 2028-03-01 | 6.3 | 0d |
| 6.5 | Kitchen/pantry fit-out | 5d | 2028-03-02 | 2028-03-08 | 6.4 | 0d |
| 6.6 | Painting & finishing | 10d | 2028-03-09 | 2028-03-22 | 6.5 | 0d |
| 7 | **7. Site works & handover** | 5d | 2028-03-23 | 2028-05-04 |  | 0d |
| 7.1 | Paving & landscaping | 10d | 2028-03-23 | 2028-04-05 | 6.6 | 0d |
| 7.2 | Entrance & lobby fit-out | 8d | 2028-04-06 | 2028-04-19 | 7.1 | 0d |
| 7.3 | Testing & commissioning | 10d | 2028-04-20 | 2028-05-04 | 7.2 | 0d |
| 7.4 | Handover | 0d | 2028-05-04 | 2028-05-04 | 7.3 | 0d |

## Version 2 (saved 2026-08-14)

Note of the change: chore(voorbeelden): examples/ en public/examples/ opnieuw gegenereerd

Last finish stays 2028-05-04.

Changed:

| ID | Task | Other |
| --- | --- | --- |
| 1.1 | Set up site | resources none → Site works contractor |
| 1.2 | Stakeholder management | resources none → Project management |
| 1.3 | Traffic management | resources none → Site works contractor |
| 1.4 | Piezometer monitoring | resources none → Geotechnical monitoring contractor |
| 2.1 | Sheet pile sections | resources none → Piling contractor |
| 2.2 | Wellpoint dewatering | resources none → Earthworks contractor |
| 2.3 | Excavate to level -2 | resources none → Earthworks contractor |
| 2.4 | Excavate to level -1 | resources none → Earthworks contractor |
| 2.5 | Bore foundation piles | resources none → Piling contractor |
| 2.6 | Foundation beams | resources none → Structural works crew; Steel fixers; Concrete C30/37 |
| 2.7 | Basement floor P2 | resources none → Structural works crew; Concrete C30/37 |
| 2.8 | Basement floor P1 | resources none → Structural works crew; Concrete C30/37 |
| 2.9 | Pour basement walls | resources none → Structural works crew; Steel fixers; Concrete C30/37 |
| 2.10 | Basement waterproofing | resources none → Structural works crew |
| 3.1 | Ground floor columns & slab | resources none → Structural works crew; Steel fixers; Tower crane; Concrete C30/37 |
| 3.2 | Floor 1 structural works | resources none → Structural works crew; Tower crane; Concrete C30/37 |
| 3.3 | Floor 2 structural works | resources none → Structural works crew; Tower crane; Concrete C30/37 |
| 3.4 | Floor 3 structural works | resources none → Structural works crew; Tower crane; Concrete C30/37 |
| 3.5 | Floor 4 structural works | resources none → Structural works crew; Tower crane; Concrete C30/37 |
| 3.6 | Floor 5 structural works | resources none → Structural works crew; Tower crane; Concrete C30/37 |
| 3.7 | Floor 6 structural works | resources none → Structural works crew; Tower crane; Concrete C30/37 |
| 3.8 | Floor 7 structural works | resources none → Structural works crew; Tower crane; Concrete C30/37 |
| 3.9 | Floor 8 structural works | resources none → Structural works crew; Tower crane; Concrete C30/37 |
| 3.10 | Concrete stair and lift core | resources none → Core formwork gang; Steel fixers; Concrete C30/37 |
| 3.11 | Steel roof structure | resources none → Structural steel contractor; Tower crane |
| 4.1 | Curtain wall installation, phase 1 | resources none → Facade contractor |
| 4.2 | Curtain wall installation, phase 2 | resources none → Facade contractor |
| 4.3 | Curtain wall installation, phase 3 | resources none → Facade contractor |
| 4.4 | Roof finishes and services | resources none → Roofing contractor |
| 5.1 | Main electrical switchroom | resources none → Electricians |
| 5.2 | Risers, electrical | resources none → Electricians |
| 5.3 | Risers, mechanical services | resources none → Mechanical fitters |
| 5.4 | Air handling units | resources none → Mechanical fitters |
| 5.5 | Ventilation ductwork | resources none → Mechanical fitters |
| 5.6 | Sprinkler installation | resources none → Mechanical fitters |
| 5.7 | Lift installation | resources none → Lift contractor |
| 5.8 | BMS/building management | resources none → Electricians |
| 6.1 | Office system partitions | resources none → Fit-out crew |
| 6.2 | Suspended ceilings | resources none → Fit-out crew |
| 6.3 | Raised floors | resources none → Fit-out crew |
| 6.4 | Sanitary rooms | resources none → Fit-out crew; Mechanical fitters |
| 6.5 | Kitchen/pantry fit-out | resources none → Fit-out crew |
| 6.6 | Painting & finishing | resources none → Painters |
| 7.1 | Paving & landscaping | resources none → Site works contractor |
| 7.2 | Entrance & lobby fit-out | resources none → Fit-out crew |
| 7.3 | Testing & commissioning | resources none → Electricians; Mechanical fitters; Project management |
