# Bouwplanning v1.0

How a schedule from an IFC model changed from version to version. A marks actual dates.

## Version 1 (saved 2026-07-28)

Note of the change: Merge remote-tracking branch 'origin/main' into claude/dialog-release-updates-599bea

| ID | Task | Duration | Start | Finish | Predecessors | Total float |
| --- | --- | --- | --- | --- | --- | --- |
| 1 | **1. Voorbereiding** | 5d | 2027-03-01 | 2027-04-05 |  | 0d |
| 1.1 | Kabels en leidingen verleggen | 10d | 2027-03-01 | 2027-03-12 |  | 0d |
| 1.2 | Bouwplaats inrichten | 5d | 2027-03-15 | 2027-03-19 | 1.1 | 165d |
| 1.3 | Monitoring omgeving | 3d | 2027-03-22 | 2027-03-24 | 1.2 | 165d |
| 1.4 | Verkeersmaatregelen | 5d | 2027-03-25 | 2027-04-02 | 1.3 | 165d |
| 1.5 | Start bouw | 0d | 2027-04-05 | 2027-04-05 | 1.4 | 165d |
| 2 | **2. Bouwkuip** | 5d | 2027-03-17 | 2027-08-16 |  | 0d |
| 2.1 | Diepwanden uitvoeren | 20d | 2027-03-17 | 2027-04-15 | 1.1 SS+12d | 0d |
| 2.2 | Stempels niveau 1 | 8d | 2027-04-16 | 2027-04-28 | 2.1 | 89d |
| 2.3 | Ontgraven laag 1 | 10d | 2027-04-29 | 2027-05-14 | 2.2 | 89d |
| 2.4 | Stempels niveau 2 | 8d | 2027-05-18 | 2027-05-27 | 2.3 | 89d |
| 2.5 | Ontgraven laag 2 | 10d | 2027-05-28 | 2027-06-10 | 2.4 | 89d |
| 2.6 | Stempels niveau 3 | 8d | 2027-06-11 | 2027-06-22 | 2.5 | 89d |
| 2.7 | Ontgraven laag 3 | 10d | 2027-06-23 | 2027-07-06 | 2.6 | 89d |
| 2.8 | Onderwaterbeton vloer | 8d | 2027-07-07 | 2027-07-16 | 2.7 | 89d |
| 2.9 | Droogpompen | 5d | 2027-07-19 | 2027-07-23 | 2.8 | 89d |
| 2.10 | Bouwkuip droog | 0d | 2027-08-16 | 2027-08-16 | 2.9 | 89d |
| 3 | **3. Betonconstructie** | 5d | 2027-03-31 | 2027-08-20 |  | 0d |
| 3.1 | Vloer niveau -3 | 10d | 2027-03-31 | 2027-04-13 | 2.1 SS | 0d |
| 3.2 | Kolommen en wanden -3 | 8d | 2027-04-14 | 2027-04-23 | 3.1 | 0d |
| 3.3 | Vloer niveau -2 | 10d | 2027-04-26 | 2027-05-12 | 3.2 | 0d |
| 3.4 | Kolommen en wanden -2 | 8d | 2027-05-13 | 2027-05-25 | 3.3 | 0d |
| 3.5 | Vloer niveau -1 | 10d | 2027-05-26 | 2027-06-08 | 3.4 | 0d |
| 3.6 | Kolommen en wanden -1 | 8d | 2027-06-09 | 2027-06-18 | 3.5 | 0d |
| 3.7 | Dek parkeergarage | 12d | 2027-06-21 | 2027-07-06 | 3.6 | 0d |
| 3.8 | Stempels verwijderen | 8d | 2027-07-07 | 2027-07-16 | 3.7 | 0d |
| 3.9 | Waterdichting | 10d | 2027-07-19 | 2027-08-20 | 3.8 | 0d |
| 4 | **4. Installaties** | 5d | 2027-07-08 | 2027-10-18 |  | 0d |
| 4.1 | Elektra hoofdverdeling | 8d | 2027-07-08 | 2027-07-19 | 3.9 FS-17d | 0d |
| 4.2 | Verlichting parkeerlagen | 10d | 2027-07-20 | 2027-08-23 | 4.1 | 0d |
| 4.3 | Ventilatie en CO-detectie | 10d | 2027-08-24 | 2027-09-06 | 4.2 | 0d |
| 4.4 | Sprinklerinstallatie | 8d | 2027-09-07 | 2027-09-16 | 4.3 | 0d |
| 4.5 | Parkeergeleiding systeem | 5d | 2027-09-17 | 2027-09-23 | 4.4 | 0d |
| 4.6 | Liftinstallatie | 12d | 2027-09-24 | 2027-10-11 | 4.5 | 0d |
| 4.7 | Brandmeldinstallatie | 5d | 2027-10-12 | 2027-10-18 | 4.6, 3.9 FF+2d | 0d |
| 5 | **5. Afwerking** | 5d | 2027-10-19 | 2027-11-18 |  | 0d |
| 5.1 | Vloercoating aanbrengen | 8d | 2027-10-19 | 2027-10-28 | 4.7 | 0d |
| 5.2 | Belijning en bewegwijzering | 5d | 2027-10-29 | 2027-11-04 | 5.1 | 0d |
| 5.3 | Toegangscontrole slagbomen | 5d | 2027-11-05 | 2027-11-11 | 5.2 | 0d |
| 5.4 | Nooduitgangen afwerken | 5d | 2027-11-12 | 2027-11-18 | 5.3 | 0d |
| 6 | **6. Bovengronds herstel** | 5d | 2027-11-19 | 2027-12-17 |  | 0d |
| 6.1 | Plein opnieuw inrichten | 10d | 2027-11-19 | 2027-12-02 | 5.4 | 0d |
| 6.2 | Bestrating en groen | 8d | 2027-12-03 | 2027-12-14 | 6.1 | 0d |
| 6.3 | Verkeersmaatregelen opheffen | 3d | 2027-12-15 | 2027-12-17 | 6.2 | 0d |
| 6.4 | Oplevering | 0d | 2027-12-17 | 2027-12-17 | 6.3 | 0d |

## Version 2 (saved 2026-07-28)

Note of the change: feat(examples): voorbeeldprojecten, showcases en demobibliotheek in het Engels (#39)

Last finish stays 2027-12-17.

Changed:

| ID | Task | Other |
| --- | --- | --- |
| 1 | **1. Preparation** | was named 1. Voorbereiding |
| 1.1 | Divert cables and pipes | was named Kabels en leidingen verleggen |
| 1.2 | Set up site | was named Bouwplaats inrichten |
| 1.3 | Environmental monitoring | was named Monitoring omgeving |
| 1.4 | Traffic management | was named Verkeersmaatregelen |
| 1.5 | Start of construction | was named Start bouw |
| 2 | **2. Excavation pit** | was named 2. Bouwkuip |
| 2.1 | Construct diaphragm walls | was named Diepwanden uitvoeren |
| 2.2 | Struts, level 1 | was named Stempels niveau 1 |
| 2.3 | Excavate layer 1 | was named Ontgraven laag 1 |
| 2.4 | Struts, level 2 | was named Stempels niveau 2 |
| 2.5 | Excavate layer 2 | was named Ontgraven laag 2 |
| 2.6 | Struts, level 3 | was named Stempels niveau 3 |
| 2.7 | Excavate layer 3 | was named Ontgraven laag 3 |
| 2.8 | Underwater concrete slab | was named Onderwaterbeton vloer |
| 2.9 | Pump dry | was named Droogpompen |
| 2.10 | Excavation pit dry | was named Bouwkuip droog |
| 3 | **3. Concrete structure** | was named 3. Betonconstructie |
| 3.1 | Slab at level -3 | was named Vloer niveau -3 |
| 3.2 | Columns and walls, level -3 | was named Kolommen en wanden -3 |
| 3.3 | Slab at level -2 | was named Vloer niveau -2 |
| 3.4 | Columns and walls, level -2 | was named Kolommen en wanden -2 |
| 3.5 | Slab at level -1 | was named Vloer niveau -1 |
| 3.6 | Columns and walls, level -1 | was named Kolommen en wanden -1 |
| 3.7 | Car park deck | was named Dek parkeergarage |
| 3.8 | Remove struts | was named Stempels verwijderen |
| 3.9 | Waterproofing | was named Waterdichting |
| 4 | **4. Building services** | was named 4. Installaties |
| 4.1 | Main electrical distribution | was named Elektra hoofdverdeling |
| 4.2 | Lighting, parking levels | was named Verlichting parkeerlagen |
| 4.3 | Ventilation and CO detection | was named Ventilatie en CO-detectie |
| 4.4 | Sprinkler installation | was named Sprinklerinstallatie |
| 4.5 | Parking guidance system | was named Parkeergeleiding systeem |
| 4.6 | Lift installation | was named Liftinstallatie |
| 4.7 | Fire alarm system | was named Brandmeldinstallatie |
| 5 | **5. Finishing** | was named 5. Afwerking |
| 5.1 | Apply floor coating | was named Vloercoating aanbrengen |
| 5.2 | Road marking and signage | was named Belijning en bewegwijzering |
| 5.3 | Access control barriers | was named Toegangscontrole slagbomen |
| 5.4 | Finish emergency exits | was named Nooduitgangen afwerken |
| 6 | **6. Surface reinstatement** | was named 6. Bovengronds herstel |
| 6.1 | Redevelop the square | was named Plein opnieuw inrichten |
| 6.2 | Paving and landscaping | was named Bestrating en groen |
| 6.3 | Remove traffic management | was named Verkeersmaatregelen opheffen |
| 6.4 | Handover | was named Oplevering |
