# Bouwplanning v1.0

How a schedule from an IFC model changed from version to version. A marks actual dates.

## Version 1 (saved 2026-07-27)

Note of the change: Merge branch 'claude/showcase-overalloc' into claude/ifc-5-key-concepts-ac68ae

| ID | Task | Duration | Start | Finish | Predecessors | Total float |
| --- | --- | --- | --- | --- | --- | --- |
| 1 | **1. Voorbereiding** | 5d | 2027-03-01 | 2027-04-01 |  | 0d |
| 1.1 | Terrein bouwrijp maken | 8d | 2027-03-01 | 2027-03-10 |  | 0d |
| 1.2 | Nutsaansluitingen 10kV | 10d | 2027-03-11 | 2027-03-24 | 1.1 | 122d |
| 1.3 | Security hekwerk tijdelijk | 3d | 2027-03-25 | 2027-03-31 | 1.2 | 122d |
| 1.4 | Start bouw | 0d | 2027-04-01 | 2027-04-01 | 1.3 | 122d |
| 2 | **2. Fundering** | 5d | 2027-03-16 | 2027-04-30 |  | 0d |
| 2.1 | Heien funderingspalen | 10d | 2027-03-16 | 2027-03-31 | 1.1 SS+11d | 0d |
| 2.2 | Funderingsbalken | 8d | 2027-04-01 | 2027-04-12 | 2.1 | 102d |
| 2.3 | Vloer op palen storten | 8d | 2027-04-13 | 2027-04-22 | 2.2 | 102d |
| 2.4 | Kabelgoten in vloer | 5d | 2027-04-23 | 2027-04-30 | 2.3 | 102d |
| 3 | **3. Constructie** | 5d | 2027-03-22 | 2027-05-20 |  | 0d |
| 3.1 | Prefab betonwanden | 12d | 2027-03-22 | 2027-04-08 | 2.1 SS | 0d |
| 3.2 | Staalconstructie dak | 8d | 2027-04-09 | 2027-04-20 | 3.1 | 0d |
| 3.3 | Dakpanelen sandwich | 8d | 2027-04-21 | 2027-05-03 | 3.2 | 0d |
| 3.4 | Verhoogde computervloer | 10d | 2027-05-04 | 2027-05-20 | 3.3 | 0d |
| 3.5 | Hoogste punt | 0d | 2027-05-20 | 2027-05-20 | 3.4 | 91d |
| 4 | **4. Gevel & Waterdicht** | 5d | 2027-05-10 | 2027-06-07 |  | 0d |
| 4.1 | Gevelisolatie en beplating | 10d | 2027-05-10 | 2027-05-24 | 3.4 FS-8d | 0d |
| 4.2 | Laadperrons en deuren | 5d | 2027-05-25 | 2027-05-31 | 4.1 | 0d |
| 4.3 | Waterdichting dak | 5d | 2027-06-01 | 2027-06-07 | 4.2, 3.4 FF+2d | 0d |
| 4.4 | Wind- en waterdicht | 0d | 2027-06-07 | 2027-06-07 | 4.3 | 79d |
| 5 | **5. Elektra & Koeling** | 5d | 2027-06-08 | 2027-09-22 |  | 0d |
| 5.1 | Transformatoren 10kV | 8d | 2027-06-08 | 2027-06-17 | 4.3 | 0d |
| 5.2 | UPS systemen | 10d | 2027-06-18 | 2027-07-01 | 5.1 | 17d |
| 5.3 | Noodstroomgeneratoren | 8d | 2027-07-02 | 2027-07-13 | 5.2 | 17d |
| 5.4 | Hoofdverdeling en PDU | 10d | 2027-07-14 | 2027-08-17 | 5.3 | 17d |
| 5.5 | Koelmachines | 10d | 2027-08-18 | 2027-08-31 | 5.4 | 17d |
| 5.6 | CRAH units datahallen | 8d | 2027-09-01 | 2027-09-10 | 5.5 | 17d |
| 5.7 | Koeltorens buiten | 8d | 2027-09-13 | 2027-09-22 | 5.6 | 17d |
| 6 | **6. ICT & Beveiliging** | 5d | 2027-07-21 | 2027-09-24 |  | 0d |
| 6.1 | Glasvezel inkomend | 5d | 2027-07-21 | 2027-08-17 | 5.1 SS+31d | 0d |
| 6.2 | Patchpanelen en bekabeling | 8d | 2027-08-18 | 2027-08-27 | 6.1 | 0d |
| 6.3 | Brandblussysteem gas | 5d | 2027-08-30 | 2027-09-03 | 6.2 | 0d |
| 6.4 | Toegangscontrole biometrisch | 5d | 2027-09-06 | 2027-09-10 | 6.3 | 0d |
| 6.5 | CCTV systeem | 5d | 2027-09-13 | 2027-09-17 | 6.4 | 0d |
| 6.6 | BMS monitoring | 5d | 2027-09-20 | 2027-09-24 | 6.5 | 0d |
| 7 | **7. Oplevering** | 5d | 2027-09-27 | 2027-10-15 |  | 0d |
| 7.1 | Testen failover scenario | 5d | 2027-09-27 | 2027-10-01 | 6.6 | 0d |
| 7.2 | Terreinafwerking | 5d | 2027-10-04 | 2027-10-08 | 7.1 | 0d |
| 7.3 | Certificering Tier III | 5d | 2027-10-11 | 2027-10-15 | 7.2 | 0d |
| 7.4 | Oplevering | 0d | 2027-10-15 | 2027-10-15 | 7.3 | 0d |

## Version 2 (saved 2026-07-28)

Note of the change: feat(examples): voorbeeldprojecten, showcases en demobibliotheek in het Engels (#39)

Last finish stays 2027-10-15.

Changed:

| ID | Task | Other |
| --- | --- | --- |
| 1 | **1. Preparation** | was named 1. Voorbereiding |
| 1.1 | Prepare site for construction | was named Terrein bouwrijp maken |
| 1.2 | 10 kV utility connections | was named Nutsaansluitingen 10kV |
| 1.3 | Temporary security fencing | was named Security hekwerk tijdelijk |
| 1.4 | Start of construction | was named Start bouw |
| 2 | **2. Foundations** | was named 2. Fundering |
| 2.1 | Pile driving, foundation piles | was named Heien funderingspalen |
| 2.2 | Foundation beams | was named Funderingsbalken |
| 2.3 | Pour slab on piles | was named Vloer op palen storten |
| 2.4 | Cable trays in floor | was named Kabelgoten in vloer |
| 3 | **3. Structure** | was named 3. Constructie |
| 3.1 | Precast concrete walls | was named Prefab betonwanden |
| 3.2 | Structural steel, roof | was named Staalconstructie dak |
| 3.3 | Sandwich roof panels | was named Dakpanelen sandwich |
| 3.4 | Raised computer floor | was named Verhoogde computervloer |
| 3.5 | Topping out | was named Hoogste punt |
| 4 | **4. Facade & weathertight** | was named 4. Gevel & Waterdicht |
| 4.1 | Facade insulation and cladding | was named Gevelisolatie en beplating |
| 4.2 | Loading docks and doors | was named Laadperrons en deuren |
| 4.3 | Roof waterproofing | was named Waterdichting dak |
| 4.4 | Wind and weathertight | was named Wind- en waterdicht |
| 5 | **5. Power & cooling** | was named 5. Elektra & Koeling |
| 5.1 | 10 kV transformers | was named Transformatoren 10kV |
| 5.2 | UPS systems | was named UPS systemen |
| 5.3 | Emergency generators | was named Noodstroomgeneratoren |
| 5.4 | Main distribution and PDUs | was named Hoofdverdeling en PDU |
| 5.5 | Chillers | was named Koelmachines |
| 5.6 | CRAH units, data halls | was named CRAH units datahallen |
| 5.7 | External cooling towers | was named Koeltorens buiten |
| 6 | **6. ICT & security** | was named 6. ICT & Beveiliging |
| 6.1 | Incoming fibre optics | was named Glasvezel inkomend |
| 6.2 | Patch panels and cabling | was named Patchpanelen en bekabeling |
| 6.3 | Gas fire suppression system | was named Brandblussysteem gas |
| 6.4 | Biometric access control | was named Toegangscontrole biometrisch |
| 6.5 | CCTV system | was named CCTV systeem |
| 7 | **7. Handover** | was named 7. Oplevering |
| 7.1 | Test failover scenario | was named Testen failover scenario |
| 7.2 | Site finishing | was named Terreinafwerking |
| 7.3 | Tier III certification | was named Certificering Tier III |
| 7.4 | Handover | was named Oplevering |

## Version 3 (saved 2026-08-14)

Note of the change: chore(voorbeelden): examples/ en public/examples/ opnieuw gegenereerd

Last finish stays 2027-10-15.

Changed:

| ID | Task | Other |
| --- | --- | --- |
| 1.2 | 10 kV utility connections | resources none → Electricians |
| 2.2 | Foundation beams | resources none → Structural crew |
| 2.3 | Pour slab on piles | resources none → Structural crew |
| 2.4 | Cable trays in floor | resources none → Electricians |
| 3.1 | Precast concrete walls | resources none → Mobile crane; Structural crew |
| 3.2 | Structural steel, roof | resources none → Mobile crane; Structural crew |
| 3.3 | Sandwich roof panels | resources none → Structural crew |
| 3.4 | Raised computer floor | resources none → Mechanical fitters |
| 4.1 | Facade insulation and cladding | resources none → Structural crew |
| 5.1 | 10 kV transformers | resources none → Electricians |
| 5.2 | UPS systems | resources none → UPS and generator supplier; Electricians |
| 5.3 | Emergency generators | resources none → UPS and generator supplier; Mechanical fitters |
| 5.4 | Main distribution and PDUs | resources none → Electricians |
| 5.5 | Chillers | resources none → Cooling contractor; Mechanical fitters |
| 5.6 | CRAH units, data halls | resources none → Cooling contractor; Mechanical fitters |
| 5.7 | External cooling towers | resources none → Cooling contractor |
| 6.1 | Incoming fibre optics | resources none → ICT cabling technicians |
| 6.2 | Patch panels and cabling | resources none → ICT cabling technicians |
| 6.3 | Gas fire suppression system | resources none → Fire suppression contractor |
| 6.4 | Biometric access control | resources none → ICT cabling technicians |
| 6.5 | CCTV system | resources none → ICT cabling technicians |
| 6.6 | BMS monitoring | resources none → ICT cabling technicians; Electricians |
| 7.1 | Test failover scenario | resources none → Commissioning engineer; Electricians |
| 7.3 | Tier III certification | resources none → Commissioning engineer |
