# Bouwplanning v1.0

How a schedule from an IFC model changed from version to version. A marks actual dates.

## Version 1 (saved 2026-07-28)

Note of the change: Merge remote-tracking branch 'origin/main' into claude/dialog-release-updates-599bea

| ID | Task | Duration | Start | Finish | Predecessors | Total float |
| --- | --- | --- | --- | --- | --- | --- |
| 1 | **1. Voorbereiding** | 5d | 2027-03-01 | 2027-03-25 |  | 0d |
| 1.1 | Sloop bestaand pand | 10d | 2027-03-01 | 2027-03-12 |  | 0d |
| 1.2 | Bouwplaats inrichten | 5d | 2027-03-15 | 2027-03-19 | 1.1 | 213d |
| 1.3 | Funderingsonderzoek | 3d | 2027-03-22 | 2027-03-24 | 1.2 | 213d |
| 1.4 | Start nieuwbouw | 0d | 2027-03-25 | 2027-03-25 | 1.3 | 213d |
| 2 | **2. Fundering** | 5d | 2027-03-12 | 2027-05-24 |  | 0d |
| 2.1 | Damwanden boulevard | 10d | 2027-03-12 | 2027-03-25 | 1.1 SS+9d | 0d |
| 2.2 | Ontgraven kelder | 8d | 2027-03-30 | 2027-04-08 | 2.1 | 177d |
| 2.3 | Funderingspalen | 12d | 2027-04-09 | 2027-04-26 | 2.2 | 177d |
| 2.4 | Keldervloer wellness | 8d | 2027-04-28 | 2027-05-11 | 2.3 | 177d |
| 2.5 | Kelderwanden | 8d | 2027-05-12 | 2027-05-24 | 2.4 | 177d |
| 3 | **3. Ruwbouw** | 5d | 2027-03-18 | 2027-06-29 |  | 0d |
| 3.1 | Begane grond lobby | 10d | 2027-03-18 | 2027-04-02 | 2.1 SS | 0d |
| 3.2 | Verdieping 1 kamers | 8d | 2027-04-05 | 2027-04-14 | 3.1 | 0d |
| 3.3 | Verdieping 2 kamers | 8d | 2027-04-15 | 2027-04-26 | 3.2 | 0d |
| 3.4 | Verdieping 3 kamers | 8d | 2027-04-28 | 2027-05-11 | 3.3 | 0d |
| 3.5 | Verdieping 4 kamers | 8d | 2027-05-12 | 2027-05-24 | 3.4 | 0d |
| 3.6 | Verdieping 5 kamers | 8d | 2027-05-25 | 2027-06-03 | 3.5 | 0d |
| 3.7 | Penthouse verdieping | 10d | 2027-06-04 | 2027-06-17 | 3.6 | 0d |
| 3.8 | Dakterras constructie | 8d | 2027-06-18 | 2027-06-29 | 3.7 | 0d |
| 3.9 | Hoogste punt | 0d | 2027-06-29 | 2027-06-29 | 3.8 | 151d |
| 4 | **4. Gevel** | 5d | 2027-06-10 | 2027-08-25 |  | 0d |
| 4.1 | Vliesgevel zeezijde | 12d | 2027-06-10 | 2027-06-25 | 3.8 FS-14d | 0d |
| 4.2 | Vliesgevel landzijde | 10d | 2027-06-28 | 2027-07-09 | 4.1 | 0d |
| 4.3 | Gevelbekleding natuursteen | 10d | 2027-07-12 | 2027-07-23 | 4.2 | 0d |
| 4.4 | Kozijnen en beglazing | 8d | 2027-08-16 | 2027-08-25 | 4.3, 3.8 FF+2d | 0d |
| 4.5 | Wind- en waterdicht | 0d | 2027-08-25 | 2027-08-25 | 4.4 | 125d |
| 5 | **5. Installaties** | 5d | 2027-08-26 | 2027-12-02 |  | 0d |
| 5.1 | Elektra hoofdverdeling | 8d | 2027-08-26 | 2027-09-06 | 4.4 | 0d |
| 5.2 | Stijgleidingen alle media | 12d | 2027-09-07 | 2027-09-22 | 5.1 | 54d |
| 5.3 | VRF klimaatsysteem | 10d | 2027-09-14 | 2027-09-27 | 5.2 SS+5d | 54d |
| 5.4 | Ventilatie en luchtbehandeling | 10d | 2027-09-28 | 2027-10-11 | 5.3 | 54d |
| 5.5 | Liftinstallatie 2x | 15d | 2027-10-12 | 2027-11-01 | 5.4 | 54d |
| 5.6 | Sprinkler en BMI | 8d | 2027-11-02 | 2027-11-11 | 5.5 | 54d |
| 5.7 | Wellness installaties | 10d | 2027-11-12 | 2027-11-25 | 5.6 | 54d |
| 5.8 | Hotelautomatisering | 5d | 2027-11-26 | 2027-12-02 | 5.7 | 54d |
| 6 | **6. Afbouw** | 5d | 2027-10-20 | 2028-01-21 |  | 0d |
| 6.1 | Kamerwanden prefab | 12d | 2027-10-20 | 2027-11-04 | 5.1 SS+39d | 0d |
| 6.2 | Badkamer prefab units | 10d | 2027-11-05 | 2027-11-18 | 6.1 | 0d |
| 6.3 | Dekvloeren en tapijt | 8d | 2027-11-19 | 2027-11-30 | 6.2 | 0d |
| 6.4 | Lobby afwerking luxe | 10d | 2027-12-01 | 2027-12-14 | 6.3 | 0d |
| 6.5 | Restaurant keuken | 8d | 2027-12-15 | 2027-12-24 | 6.4 | 0d |
| 6.6 | Schilderwerk | 10d | 2027-12-27 | 2028-01-07 | 6.5 | 0d |
| 6.7 | Inrichting kamers | 10d | 2028-01-10 | 2028-01-21 | 6.6 | 0d |
| 7 | **7. Oplevering** | 5d | 2028-01-24 | 2028-02-16 |  | 0d |
| 7.1 | Dakterras afwerken | 5d | 2028-01-24 | 2028-01-28 | 6.7 | 0d |
| 7.2 | Buitenterrein boulevard | 8d | 2028-01-31 | 2028-02-09 | 7.1 | 0d |
| 7.3 | Testen en inregelen | 5d | 2028-02-10 | 2028-02-16 | 7.2 | 0d |
| 7.4 | Oplevering hotel | 0d | 2028-02-16 | 2028-02-16 | 7.3 | 0d |

## Version 2 (saved 2026-07-28)

Note of the change: feat(examples): voorbeeldprojecten, showcases en demobibliotheek in het Engels (#39)

Last finish stays 2028-02-16.

Changed:

| ID | Task | Other |
| --- | --- | --- |
| 1 | **1. Preparation** | was named 1. Voorbereiding |
| 1.1 | Demolish existing building | was named Sloop bestaand pand |
| 1.2 | Set up site | was named Bouwplaats inrichten |
| 1.3 | Foundation survey | was named Funderingsonderzoek |
| 1.4 | Start of new build | was named Start nieuwbouw |
| 2 | **2. Foundations** | was named 2. Fundering |
| 2.1 | Sheet piling, boulevard | was named Damwanden boulevard |
| 2.2 | Excavate basement | was named Ontgraven kelder |
| 2.3 | Foundation piles | was named Funderingspalen |
| 2.4 | Basement floor, wellness | was named Keldervloer wellness |
| 2.5 | Basement walls | was named Kelderwanden |
| 3 | **3. Structural works** | was named 3. Ruwbouw |
| 3.1 | Ground floor lobby | was named Begane grond lobby |
| 3.2 | Floor 1 rooms | was named Verdieping 1 kamers |
| 3.3 | Floor 2 rooms | was named Verdieping 2 kamers |
| 3.4 | Floor 3 rooms | was named Verdieping 3 kamers |
| 3.5 | Floor 4 rooms | was named Verdieping 4 kamers |
| 3.6 | Floor 5 rooms | was named Verdieping 5 kamers |
| 3.7 | Penthouse floor | was named Penthouse verdieping |
| 3.8 | Roof terrace structure | was named Dakterras constructie |
| 3.9 | Topping out | was named Hoogste punt |
| 4 | **4. Facade** | was named 4. Gevel |
| 4.1 | Curtain wall, sea side | was named Vliesgevel zeezijde |
| 4.2 | Curtain wall, land side | was named Vliesgevel landzijde |
| 4.3 | Natural stone cladding | was named Gevelbekleding natuursteen |
| 4.4 | Window frames and glazing | was named Kozijnen en beglazing |
| 4.5 | Wind and weathertight | was named Wind- en waterdicht |
| 5 | **5. Building services** | was named 5. Installaties |
| 5.1 | Main electrical distribution | was named Elektra hoofdverdeling |
| 5.2 | Risers, all services | was named Stijgleidingen alle media |
| 5.3 | VRF climate system | was named VRF klimaatsysteem |
| 5.4 | Ventilation and air handling | was named Ventilatie en luchtbehandeling |
| 5.5 | Lift installation (2 units) | was named Liftinstallatie 2x |
| 5.6 | Sprinkler and fire alarm | was named Sprinkler en BMI |
| 5.7 | Wellness building services | was named Wellness installaties |
| 5.8 | Hotel automation | was named Hotelautomatisering |
| 6 | **6. Fit-out** | was named 6. Afbouw |
| 6.1 | Prefab room walls | was named Kamerwanden prefab |
| 6.2 | Prefab bathroom pods | was named Badkamer prefab units |
| 6.3 | Screeds and carpet | was named Dekvloeren en tapijt |
| 6.4 | Luxury lobby finishes | was named Lobby afwerking luxe |
| 6.5 | Restaurant kitchen | was named Restaurant keuken |
| 6.6 | Painting | was named Schilderwerk |
| 6.7 | Room furnishing | was named Inrichting kamers |
| 7 | **7. Handover** | was named 7. Oplevering |
| 7.1 | Finish roof terrace | was named Dakterras afwerken |
| 7.2 | External areas, boulevard | was named Buitenterrein boulevard |
| 7.3 | Testing and commissioning | was named Testen en inregelen |
| 7.4 | Hotel handover | was named Oplevering hotel |
