# Bouwplanning v1.0

How a schedule from an IFC model changed from version to version. A marks actual dates.

## Version 1 (saved 2026-07-27)

Note of the change: Merge remote-tracking branch 'origin/main' into claude/repo-maintainability-report-d1c5e6

| ID | Task | Duration | Start | Finish | Predecessors | Complete | Total float |
| --- | --- | --- | --- | --- | --- | --- | --- |
| 1 | Start bouw | 0d | 2027-03-01 A | 2027-03-01 A |  | 100% | 0d |
| 2 | **1. Terreininrichting** | 5d | 2027-03-01 | 2027-03-12 |  |  | 0d |
| 2.1 | Bouwbord & veiligheidshek plaatsen | 1d | 2027-03-01 A | 2027-03-02 A | 1 | 100% | 0d |
| 2.2 | Bouwweg aanleggen | 3d | 2027-03-02 A | 2027-03-05 A | 2.1 | 100% | 0d |
| 2.3 | Bouwketen plaatsen | 2d | 2027-03-05 A | 2027-03-09 A | 2.2 | 100% | 0d |
| 2.4 | Nutsaansluitingen aanleggen | 3d | 2027-03-09 A | 2027-03-12 A | 2.3 | 100% | 0d |
| 3 | **2. Fundering (gedeeld)** | 5d | 2027-03-12 | 2027-04-07 |  |  | 0d |
| 3.1 | Grondwerk bouwput | 5d | 2027-03-12 A | 2027-03-19 A | 2.4 | 100% | 0d |
| 3.2 | Funderingsbalken storten | 5d | 2027-03-19 A | 2027-03-29 A | 3.1 | 100% | 0d |
| 3.3 | Begane grondvloer storten | 4d | 2027-04-01 A | 2027-04-07 A | 3.2 FS+3d | 100% | 0d |
| 3.4 | Inspectie fundering | 0d | 2027-04-07 A | 2027-04-07 A | 3.3 | 100% | 0d |
| 4 | **3. Ruwbouw per woning** | 5d | 2027-04-07 | 2027-06-25 |  |  | 0d |
| 4.1 | Metselwerk begane grond â Woning 1 | 6d | 2027-04-07 A | 2027-04-15 A | 3.4 | 100% | 0d |
| 4.2 | Verdiepingsvloer â Woning 1 | 4d | 2027-04-15 A | 2027-04-21 A | 4.1 | 100% | 25d |
| 4.3 | Metselwerk verdieping â Woning 1 | 6d | 2027-04-21 A | 2027-04-29 A | 4.2 | 100% | 26d |
| 4.4 | Kapconstructie â Woning 1 | 5d | 2027-04-29 A | 2027-05-06 A | 4.3 | 100% | 28d |
| 4.5 | Metselwerk begane grond â Woning 2 | 6d | 2027-04-15 A | 2027-04-23 A | 4.1 | 100% | 0d |
| 4.6 | Verdiepingsvloer â Woning 2 | 4d | 2027-04-23 A | 2027-04-29 A | 4.5 | 100% | 19d |
| 4.7 | Metselwerk verdieping â Woning 2 | 6d | 2027-04-29 A | 2027-05-07 A | 4.6 | 100% | 21d |
| 4.8 | Kapconstructie â Woning 2 | 5d | 2027-05-07 A | 2027-05-14 A | 4.7 | 100% | 21d |
| 4.9 | Metselwerk begane grond â Woning 3 | 6d | 2027-04-23 A | 2027-05-03 A | 4.5 | 100% | 0d |
| 4.10 | Verdiepingsvloer â Woning 3 | 4d | 2027-05-03 A | 2027-05-07 A | 4.9 | 100% | 15d |
| 4.11 | Metselwerk verdieping â Woning 3 | 6d | 2027-05-07 A | 2027-05-17 A | 4.10 | 100% | 16d |
| 4.12 | Kapconstructie â Woning 3 | 5d | 2027-05-17 A | 2027-05-20 A | 4.11 | 100% | 18d |
| 4.13 | Metselwerk begane grond â Woning 4 | 6d | 2027-05-03 A | 2027-05-11 A | 4.9 | 100% | 0d |
| 4.14 | Verdiepingsvloer â Woning 4 | 4d | 2027-05-11 A | 2027-05-21 | 4.13 | 50% | 6d |
| 4.15 | Metselwerk verdieping â Woning 4 | 6d | 2027-05-24 | 2027-05-31 | 4.14 |  | 6d |
| 4.16 | Kapconstructie â Woning 4 | 5d | 2027-06-01 | 2027-06-07 | 4.15 |  | 6d |
| 4.17 | Metselwerk begane grond â Woning 5 | 6d | 2027-05-20 | 2027-05-27 | 4.13 |  | 0d |
| 4.18 | Verdiepingsvloer â Woning 5 | 4d | 2027-05-28 | 2027-06-02 | 4.17 |  | 0d |
| 4.19 | Metselwerk verdieping â Woning 5 | 6d | 2027-06-03 | 2027-06-10 | 4.18 |  | 0d |
| 4.20 | Kapconstructie â Woning 5 | 5d | 2027-06-11 | 2027-06-17 | 4.19 |  | 0d |
| 4.21 | Metselwerk begane grond â Woning 6 | 6d | 2027-05-28 | 2027-06-04 | 4.17 |  | 0d |
| 4.22 | Verdiepingsvloer â Woning 6 | 4d | 2027-06-07 | 2027-06-10 | 4.21 |  | 0d |
| 4.23 | Metselwerk verdieping â Woning 6 | 6d | 2027-06-11 | 2027-06-18 | 4.22 |  | 0d |
| 4.24 | Kapconstructie â Woning 6 | 5d | 2027-06-21 | 2027-06-25 | 4.23 |  | 0d |
| 4.25 | Hoogste punt bereikt | 0d | 2027-06-25 | 2027-06-25 | 4.4, 4.8, 4.12, 4.16, 4.20, 4.24 |  | 22d |
| 5 | **4. Installaties** | 5d | 2027-05-20 | 2027-07-06 |  |  | 0d |
| 5.1 | Loodgieterswerk â Woning 1 | 3d | 2027-05-20 | 2027-05-24 | 4.4 |  | 20d |
| 5.2 | Elektra â Woning 1 | 3d | 2027-05-25 | 2027-05-27 | 5.1 |  | 20d |
| 5.3 | Opleverkeuring installaties â Woning 1 | 1d | 2027-05-27 | 2027-05-27 | 5.2 FS-1d |  | 20d |
| 5.4 | Loodgieterswerk â Woning 2 | 3d | 2027-05-20 | 2027-05-24 | 4.8 |  | 19d |
| 5.5 | Elektra â Woning 2 | 3d | 2027-05-25 | 2027-05-27 | 5.4 |  | 19d |
| 5.6 | Opleverkeuring installaties â Woning 2 | 1d | 2027-05-28 | 2027-05-28 | 5.5 |  | 19d |
| 5.7 | Loodgieterswerk â Woning 3 | 3d | 2027-05-21 | 2027-05-25 | 4.12 |  | 18d |
| 5.8 | Elektra â Woning 3 | 3d | 2027-05-26 | 2027-05-28 | 5.7 |  | 18d |
| 5.9 | Opleverkeuring installaties â Woning 3 | 1d | 2027-05-31 | 2027-05-31 | 5.8 |  | 18d |
| 5.10 | Loodgieterswerk â Woning 4 | 3d | 2027-06-08 | 2027-06-10 | 4.16 |  | 6d |
| 5.11 | Elektra â Woning 4 | 3d | 2027-06-11 | 2027-06-15 | 5.10 |  | 6d |
| 5.12 | Opleverkeuring installaties â Woning 4 | 1d | 2027-06-16 | 2027-06-16 | 5.11 |  | 6d |
| 5.13 | Loodgieterswerk â Woning 5 | 3d | 2027-06-18 | 2027-06-22 | 4.20 |  | 0d |
| 5.14 | Elektra â Woning 5 | 3d | 2027-06-23 | 2027-06-25 | 5.13 |  | 0d |
| 5.15 | Opleverkeuring installaties â Woning 5 | 1d | 2027-06-28 | 2027-06-28 | 5.14 |  | 0d |
| 5.16 | Loodgieterswerk â Woning 6 | 3d | 2027-06-28 | 2027-06-30 | 4.24 |  | 0d |
| 5.17 | Elektra â Woning 6 | 3d | 2027-07-01 | 2027-07-05 | 5.16 |  | 0d |
| 5.18 | Opleverkeuring installaties â Woning 6 | 1d | 2027-07-06 | 2027-07-06 | 5.17 |  | 0d |
| 6 | **5. Afbouw** | 5d | 2027-05-28 | 2027-08-17 |  |  | 0d |
| 6.1 | Stucwerk â Woning 1 | 5d | 2027-05-28 | 2027-06-03 | 5.3 |  | 20d |
| 6.2 | Tegelwerk â Woning 1 | 3d | 2027-06-04 | 2027-06-08 | 6.1 |  | 22d |
| 6.3 | Sanitair plaatsen â Woning 1 | 3d | 2027-06-09 | 2027-06-11 | 6.2 |  | 22d |
| 6.4 | Schilderwerk â Woning 1 | 4d | 2027-06-10 | 2027-06-15 | 6.3 SS |  | 22d |
| 6.5 | Stucwerk â Woning 2 | 5d | 2027-05-31 | 2027-06-04 | 5.6, 6.1 SS |  | 19d |
| 6.6 | Tegelwerk â Woning 2 | 3d | 2027-06-07 | 2027-06-09 | 6.5 |  | 19d |
| 6.7 | Sanitair plaatsen â Woning 2 | 3d | 2027-06-10 | 2027-06-14 | 6.6 |  | 19d |
| 6.8 | Schilderwerk â Woning 2 | 4d | 2027-06-15 | 2027-06-18 | 6.7 |  | 19d |
| 6.9 | Stucwerk â Woning 3 | 5d | 2027-06-01 | 2027-06-07 | 5.9 |  | 18d |
| 6.10 | Tegelwerk â Woning 3 | 3d | 2027-06-08 | 2027-06-10 | 6.9 |  | 18d |
| 6.11 | Sanitair plaatsen â Woning 3 | 3d | 2027-06-11 | 2027-06-15 | 6.10 |  | 18d |
| 6.12 | Schilderwerk â Woning 3 | 4d | 2027-06-16 | 2027-06-21 | 6.11 |  | 18d |
| 6.13 | Stucwerk â Woning 4 | 5d | 2027-06-17 | 2027-06-23 | 5.12 |  | 6d |

| ID | Task | Duration | Start | Finish | Predecessors | Total float |
| --- | --- | --- | --- | --- | --- | --- |
| 6.14 | Tegelwerk â Woning 4 | 3d | 2027-06-24 | 2027-06-28 | 6.13 | 6d |
| 6.15 | Sanitair plaatsen â Woning 4 | 3d | 2027-06-29 | 2027-07-01 | 6.14 | 6d |
| 6.16 | Schilderwerk â Woning 4 | 4d | 2027-07-02 | 2027-07-07 | 6.15 | 6d |
| 6.17 | Stucwerk â Woning 5 | 5d | 2027-06-29 | 2027-07-05 | 5.15 | 0d |
| 6.18 | Tegelwerk â Woning 5 | 3d | 2027-07-06 | 2027-07-08 | 6.17 | 0d |
| 6.19 | Sanitair plaatsen â Woning 5 | 3d | 2027-07-09 | 2027-07-13 | 6.18 | 0d |
| 6.20 | Schilderwerk â Woning 5 | 4d | 2027-07-14 | 2027-07-19 | 6.19 | 0d |
| 6.21 | Stucwerk â Woning 6 | 5d | 2027-07-07 | 2027-07-13 | 5.18 | 0d |
| 6.22 | Tegelwerk â Woning 6 | 3d | 2027-07-14 | 2027-07-16 | 6.21 | 0d |
| 6.23 | Sanitair plaatsen â Woning 6 | 3d | 2027-07-19 | 2027-07-21 | 6.22 | 0d |
| 6.24 | Schilderwerk â Woning 6 | 4d | 2027-07-22 | 2027-08-17 | 6.23 | 0d |
| 7 | **6. Oplevering** | 5d | 2027-06-15 | 2027-08-17 |  | 0d |
| 7.1 | Opleverinspectie â Woning 1 | 0d | 2027-06-15 | 2027-06-15 | 6.4, 6.3 | 22d |
| 7.2 | Opleverinspectie â Woning 2 | 0d | 2027-06-18 | 2027-06-18 | 6.8, 6.7 | 19d |
| 7.3 | Opleverinspectie â Woning 3 | 0d | 2027-06-21 | 2027-06-21 | 6.12, 6.11 | 18d |
| 7.4 | Opleverinspectie â Woning 4 | 0d | 2027-07-07 | 2027-07-07 | 6.16, 6.15 | 6d |
| 7.5 | Opleverinspectie â Woning 5 | 0d | 2027-07-19 | 2027-07-19 | 6.20, 6.19 | 0d |
| 7.6 | Opleverinspectie â Woning 6 | 0d | 2027-08-17 | 2027-08-17 | 6.24, 6.23 | 0d |
| 7.7 | Contractuele oplevering project | 0d | 2027-08-17 | 2027-08-17 | 7.1, 7.2, 7.3, 7.4, 7.5, 7.6 | 0d |

## Version 2 (saved 2026-07-28)

Note of the change: feat(examples): voorbeeldprojecten, showcases en demobibliotheek in het Engels (#39)

Last finish stays 2027-08-17.

Changed:

| ID | Task | Other |
| --- | --- | --- |
| 1 | Start of construction | was named Start bouw |
| 2 | **1. Site set-up** | was named 1. Terreininrichting |
| 2.1 | Install site board & safety fencing | was named Bouwbord & veiligheidshek plaatsen |
| 2.2 | Construct site road | was named Bouwweg aanleggen |
| 2.3 | Place site huts | was named Bouwketen plaatsen |
| 2.4 | Install utility connections | was named Nutsaansluitingen aanleggen |
| 3 | **2. Foundations (shared)** | was named 2. Fundering (gedeeld) |
| 3.1 | Excavation, building pit | was named Grondwerk bouwput |
| 3.2 | Pour foundation beams | was named Funderingsbalken storten; resources Beton C20/25 → Concrete C20/25 |
| 3.3 | Pour ground floor slab | was named Begane grondvloer storten; resources Beton C20/25 → Concrete C20/25 |
| 3.4 | Foundation inspection | was named Inspectie fundering |
| 4 | **3. Structural works per house** | was named 3. Ruwbouw per woning |
| 4.1 | Ground floor masonry â House 1 | was named Metselwerk begane grond â Woning 1; resources Metselaars → Bricklayers |
| 4.2 | Upper floor slab â House 1 | was named Verdiepingsvloer â Woning 1 |
| 4.3 | Upper floor masonry â House 1 | was named Metselwerk verdieping â Woning 1; resources Metselaars → Bricklayers |
| 4.4 | Roof structure â House 1 | was named Kapconstructie â Woning 1; resources Timmerlieden → Carpenters |
| 4.5 | Ground floor masonry â House 2 | was named Metselwerk begane grond â Woning 2; resources Metselaars → Bricklayers |
| 4.6 | Upper floor slab â House 2 | was named Verdiepingsvloer â Woning 2 |
| 4.7 | Upper floor masonry â House 2 | was named Metselwerk verdieping â Woning 2; resources Metselaars → Bricklayers |
| 4.8 | Roof structure â House 2 | was named Kapconstructie â Woning 2; resources Timmerlieden → Carpenters |
| 4.9 | Ground floor masonry â House 3 | was named Metselwerk begane grond â Woning 3; resources Metselaars → Bricklayers |
| 4.10 | Upper floor slab â House 3 | was named Verdiepingsvloer â Woning 3 |
| 4.11 | Upper floor masonry â House 3 | was named Metselwerk verdieping â Woning 3; resources Metselaars → Bricklayers |
| 4.12 | Roof structure â House 3 | was named Kapconstructie â Woning 3; resources Timmerlieden → Carpenters |
| 4.13 | Ground floor masonry â House 4 | was named Metselwerk begane grond â Woning 4; resources Metselaars → Bricklayers |
| 4.14 | Upper floor slab â House 4 | was named Verdiepingsvloer â Woning 4 |
| 4.15 | Upper floor masonry â House 4 | was named Metselwerk verdieping â Woning 4; resources Metselaars → Bricklayers |
| 4.16 | Roof structure â House 4 | was named Kapconstructie â Woning 4; resources Timmerlieden → Carpenters |
| 4.17 | Ground floor masonry â House 5 | was named Metselwerk begane grond â Woning 5; resources Metselaars → Bricklayers |
| 4.18 | Upper floor slab â House 5 | was named Verdiepingsvloer â Woning 5 |
| 4.19 | Upper floor masonry â House 5 | was named Metselwerk verdieping â Woning 5; resources Metselaars → Bricklayers |
| 4.20 | Roof structure â House 5 | was named Kapconstructie â Woning 5; resources Timmerlieden → Carpenters |
| 4.21 | Ground floor masonry â House 6 | was named Metselwerk begane grond â Woning 6; resources Metselaars → Bricklayers |
| 4.22 | Upper floor slab â House 6 | was named Verdiepingsvloer â Woning 6 |
| 4.23 | Upper floor masonry â House 6 | was named Metselwerk verdieping â Woning 6; resources Metselaars → Bricklayers |
| 4.24 | Roof structure â House 6 | was named Kapconstructie â Woning 6; resources Timmerlieden → Carpenters |
| 4.25 | Topping out reached | was named Hoogste punt bereikt |
| 5 | **4. Building services** | was named 4. Installaties |
| 5.1 | Plumbing â House 1 | was named Loodgieterswerk â Woning 1; resources Installateurs → MEP fitters |
| 5.2 | Electrical â House 1 | was named Elektra â Woning 1; resources Installateurs → MEP fitters |
| 5.3 | Services commissioning inspection â House 1 | was named Opleverkeuring installaties â Woning 1 |
| 5.4 | Plumbing â House 2 | was named Loodgieterswerk â Woning 2; resources Installateurs → MEP fitters |
| 5.5 | Electrical â House 2 | was named Elektra â Woning 2; resources Installateurs → MEP fitters |
| 5.6 | Services commissioning inspection â House 2 | was named Opleverkeuring installaties â Woning 2 |
| 5.7 | Plumbing â House 3 | was named Loodgieterswerk â Woning 3; resources Installateurs → MEP fitters |
| 5.8 | Electrical â House 3 | was named Elektra â Woning 3; resources Installateurs → MEP fitters |
| 5.9 | Services commissioning inspection â House 3 | was named Opleverkeuring installaties â Woning 3 |
| 5.10 | Plumbing â House 4 | was named Loodgieterswerk â Woning 4; resources Installateurs → MEP fitters |
| 5.11 | Electrical â House 4 | was named Elektra â Woning 4; resources Installateurs → MEP fitters |
| 5.12 | Services commissioning inspection â House 4 | was named Opleverkeuring installaties â Woning 4 |
| 5.13 | Plumbing â House 5 | was named Loodgieterswerk â Woning 5; resources Installateurs → MEP fitters |
| 5.14 | Electrical â House 5 | was named Elektra â Woning 5; resources Installateurs → MEP fitters |
| 5.15 | Services commissioning inspection â House 5 | was named Opleverkeuring installaties â Woning 5 |
| 5.16 | Plumbing â House 6 | was named Loodgieterswerk â Woning 6; resources Installateurs → MEP fitters |
| 5.17 | Electrical â House 6 | was named Elektra â Woning 6; resources Installateurs → MEP fitters |
| 5.18 | Services commissioning inspection â House 6 | was named Opleverkeuring installaties â Woning 6 |
| 6 | **5. Fit-out** | was named 5. Afbouw |
| 6.1 | Plastering â House 1 | was named Stucwerk â Woning 1; resources Stukadoors → Plasterers |
| 6.2 | Tiling â House 1 | was named Tegelwerk â Woning 1 |
| 6.3 | Install sanitary fittings â House 1 | was named Sanitair plaatsen â Woning 1 |
| 6.4 | Painting â House 1 | was named Schilderwerk â Woning 1; resources Schilders → Painters |
| 6.5 | Plastering â House 2 | was named Stucwerk â Woning 2; resources Stukadoors → Plasterers |
| 6.6 | Tiling â House 2 | was named Tegelwerk â Woning 2 |
| 6.7 | Install sanitary fittings â House 2 | was named Sanitair plaatsen â Woning 2 |
| 6.8 | Painting â House 2 | was named Schilderwerk â Woning 2; resources Schilders → Painters |
| 6.9 | Plastering â House 3 | was named Stucwerk â Woning 3; resources Stukadoors → Plasterers |
| 6.10 | Tiling â House 3 | was named Tegelwerk â Woning 3 |
| 6.11 | Install sanitary fittings â House 3 | was named Sanitair plaatsen â Woning 3 |
| 6.12 | Painting â House 3 | was named Schilderwerk â Woning 3; resources Schilders → Painters |
| 6.13 | Plastering â House 4 | was named Stucwerk â Woning 4; resources Stukadoors → Plasterers |

| ID | Task | Other |
| --- | --- | --- |
| 6.14 | Tiling â House 4 | was named Tegelwerk â Woning 4 |
| 6.15 | Install sanitary fittings â House 4 | was named Sanitair plaatsen â Woning 4 |
| 6.16 | Painting â House 4 | was named Schilderwerk â Woning 4; resources Schilders → Painters |
| 6.17 | Plastering â House 5 | was named Stucwerk â Woning 5; resources Stukadoors → Plasterers |
| 6.18 | Tiling â House 5 | was named Tegelwerk â Woning 5 |
| 6.19 | Install sanitary fittings â House 5 | was named Sanitair plaatsen â Woning 5 |
| 6.20 | Painting â House 5 | was named Schilderwerk â Woning 5; resources Schilders → Painters |
| 6.21 | Plastering â House 6 | was named Stucwerk â Woning 6; resources Stukadoors → Plasterers |
| 6.22 | Tiling â House 6 | was named Tegelwerk â Woning 6 |
| 6.23 | Install sanitary fittings â House 6 | was named Sanitair plaatsen â Woning 6 |
| 6.24 | Painting â House 6 | was named Schilderwerk â Woning 6; resources Schilders → Painters |
| 7 | **6. Handover** | was named 6. Oplevering |
| 7.1 | Handover inspection â House 1 | was named Opleverinspectie â Woning 1 |
| 7.2 | Handover inspection â House 2 | was named Opleverinspectie â Woning 2 |
| 7.3 | Handover inspection â House 3 | was named Opleverinspectie â Woning 3 |
| 7.4 | Handover inspection â House 4 | was named Opleverinspectie â Woning 4 |
| 7.5 | Handover inspection â House 5 | was named Opleverinspectie â Woning 5 |
| 7.6 | Handover inspection â House 6 | was named Opleverinspectie â Woning 6 |
| 7.7 | Contractual project handover | was named Contractuele oplevering project |
