# Bouwplanning v1.0

How a schedule from an IFC model changed from version to version. A marks actual dates.

## Version 1 (saved 2026-07-28)

Note of the change: Merge remote-tracking branch 'origin/main' into claude/dialog-release-updates-599bea

| ID | Task | Duration | Start | Finish | Predecessors | Total float |
| --- | --- | --- | --- | --- | --- | --- |
| 1 | **1. Voorbereiding** | 5d | 2027-03-01 | 2027-03-16 |  | 0d |
| 1.1 | Bouwplaats inrichten | 5d | 2027-03-01 | 2027-03-05 |  | 0d |
| 1.2 | Grondonderzoek aanvullend | 3d | 2027-03-08 | 2027-03-10 | 1.1 | 199d |
| 1.3 | Bomen kappen en verplanten | 3d | 2027-03-11 | 2027-03-15 | 1.2 | 199d |
| 1.4 | Start bouw | 0d | 2027-03-16 | 2027-03-16 | 1.3 | 199d |
| 2 | **2. Fundering** | 5d | 2027-03-09 | 2027-04-30 |  | 0d |
| 2.1 | Heien funderingspalen | 12d | 2027-03-09 | 2027-03-24 | 1.1 SS+6d | 0d |
| 2.2 | Funderingsbalken | 8d | 2027-03-25 | 2027-04-07 | 2.1 | 169d |
| 2.3 | Riolering en grondleidingen | 8d | 2027-04-08 | 2027-04-19 | 2.2 | 169d |
| 2.4 | Begane grondvloer storten | 8d | 2027-04-20 | 2027-04-30 | 2.3 | 169d |
| 3 | **3. Ruwbouw** | 5d | 2027-03-16 | 2027-06-24 |  | 0d |
| 3.1 | Begane grond draagstructuur | 12d | 2027-03-16 | 2027-04-02 | 2.1 SS | 0d |
| 3.2 | Verdieping 1 beton | 10d | 2027-04-05 | 2027-04-16 | 3.1 | 0d |
| 3.3 | Verdieping 2 beton | 10d | 2027-04-19 | 2027-05-03 | 3.2 | 0d |
| 3.4 | Metselwerk gevels | 15d | 2027-05-04 | 2027-05-27 | 3.3 | 0d |
| 3.5 | Binnenwanden kalkzandsteen | 10d | 2027-05-28 | 2027-06-10 | 3.4 | 0d |
| 3.6 | Dakconstructie | 10d | 2027-06-11 | 2027-06-24 | 3.5 | 0d |
| 3.7 | Hoogste punt | 0d | 2027-06-24 | 2027-06-24 | 3.6 | 133d |
| 4 | **4. Gevel & Dak** | 5d | 2027-06-08 | 2027-08-16 |  | 0d |
| 4.1 | Gevelisolatie en afwerking | 12d | 2027-06-08 | 2027-06-23 | 3.6 FS-13d | 0d |
| 4.2 | Kozijnen en puien | 10d | 2027-06-24 | 2027-07-07 | 4.1 | 0d |
| 4.3 | Dakisolatie en bedekking | 8d | 2027-07-08 | 2027-07-19 | 4.2 | 0d |
| 4.4 | Dakranden en hemelwaterafvoer | 5d | 2027-07-20 | 2027-08-16 | 4.3, 3.6 FF+2d | 0d |
| 4.5 | Wind- en waterdicht | 0d | 2027-08-16 | 2027-08-16 | 4.4 | 111d |
| 5 | **5. Installaties** | 5d | 2027-08-17 | 2027-11-24 |  | 0d |
| 5.1 | Elektra hoofdverdeling | 8d | 2027-08-17 | 2027-08-26 | 4.4 | 0d |
| 5.2 | Noodstroomvoorziening | 5d | 2027-08-27 | 2027-09-02 | 5.1 | 39d |
| 5.3 | Zuurstof en medische gassen | 8d | 2027-09-03 | 2027-09-14 | 5.2 | 39d |
| 5.4 | CV en koeling | 10d | 2027-09-08 | 2027-09-21 | 5.3 SS+3d | 39d |
| 5.5 | Ventilatie met HEPA filters | 10d | 2027-09-22 | 2027-10-05 | 5.4 | 39d |
| 5.6 | Sprinkler en BMI | 8d | 2027-10-06 | 2027-10-15 | 5.5 | 39d |
| 5.7 | Liftinstallatie | 15d | 2027-10-18 | 2027-11-05 | 5.6 | 39d |
| 5.8 | Zuster-oproepsysteem | 5d | 2027-11-08 | 2027-11-12 | 5.7 | 39d |
| 5.9 | ICT bekabeling | 8d | 2027-11-15 | 2027-11-24 | 5.8 | 39d |
| 6 | **6. Afbouw** | 5d | 2027-10-11 | 2027-12-23 |  | 0d |
| 6.1 | Scheidingswanden | 8d | 2027-10-11 | 2027-10-20 | 5.1 SS+39d | 0d |
| 6.2 | Plafonds en wanden afwerken | 10d | 2027-10-21 | 2027-11-03 | 6.1 | 0d |
| 6.3 | Tegelwerk natte ruimten | 8d | 2027-11-04 | 2027-11-15 | 6.2 | 0d |
| 6.4 | Dekvloeren en vloerafwerking | 8d | 2027-11-16 | 2027-11-25 | 6.3 | 0d |
| 6.5 | Schilderwerk | 10d | 2027-11-26 | 2027-12-09 | 6.4 | 0d |
| 6.6 | Keukens en pantry | 5d | 2027-12-10 | 2027-12-16 | 6.5 | 0d |
| 6.7 | Sanitair plaatsen | 5d | 2027-12-17 | 2027-12-23 | 6.6 | 0d |
| 7 | **7. Oplevering** | 5d | 2027-12-24 | 2028-01-18 |  | 0d |
| 7.1 | Buitenterrein aanleggen | 8d | 2027-12-24 | 2028-01-04 | 6.7 | 0d |
| 7.2 | Inrichting kamers | 5d | 2028-01-05 | 2028-01-11 | 7.1 | 0d |
| 7.3 | Testen installaties | 5d | 2028-01-12 | 2028-01-18 | 7.2 | 0d |
| 7.4 | Oplevering | 0d | 2028-01-18 | 2028-01-18 | 7.3 | 0d |

## Version 2 (saved 2026-08-14)

Note of the change: chore(voorbeelden): examples/ en public/examples/ opnieuw gegenereerd

Last finish stays 2028-01-18.

Changed:

| ID | Task | Other |
| --- | --- | --- |
| 1 | **1. Preparation** | was named 1. Voorbereiding |
| 1.1 | Set up site | was named Bouwplaats inrichten |
| 1.2 | Additional soil investigation | was named Grondonderzoek aanvullend |
| 1.3 | Fell and transplant trees | was named Bomen kappen en verplanten |
| 1.4 | Start of construction | was named Start bouw |
| 2 | **2. Foundations** | was named 2. Fundering |
| 2.1 | Pile driving, foundation piles | was named Heien funderingspalen |
| 2.2 | Foundation beams | was named Funderingsbalken |
| 2.3 | Sewerage and underground pipework | was named Riolering en grondleidingen |
| 2.4 | Pour ground floor slab | was named Begane grondvloer storten |
| 3 | **3. Structural works** | was named 3. Ruwbouw |
| 3.1 | Ground floor load-bearing structure | was named Begane grond draagstructuur |
| 3.2 | Floor 1 concrete | was named Verdieping 1 beton |
| 3.3 | Floor 2 concrete | was named Verdieping 2 beton |
| 3.4 | Facade masonry | was named Metselwerk gevels |
| 3.5 | Internal walls, sand-lime brick | was named Binnenwanden kalkzandsteen |
| 3.6 | Roof structure | was named Dakconstructie |
| 3.7 | Topping out | was named Hoogste punt |
| 4 | **4. Facade & roof** | was named 4. Gevel & Dak |
| 4.1 | Facade insulation and finish | was named Gevelisolatie en afwerking |
| 4.2 | Window frames and screens | was named Kozijnen en puien |
| 4.3 | Roof insulation and covering | was named Dakisolatie en bedekking |
| 4.4 | Roof edges and rainwater drainage | was named Dakranden en hemelwaterafvoer |
| 4.5 | Wind and weathertight | was named Wind- en waterdicht |
| 5 | **5. Building services** | was named 5. Installaties |
| 5.1 | Main electrical distribution | was named Elektra hoofdverdeling |
| 5.2 | Emergency power supply | was named Noodstroomvoorziening |
| 5.3 | Oxygen and medical gases | was named Zuurstof en medische gassen |
| 5.4 | Heating and cooling | was named CV en koeling |
| 5.5 | Ventilation with HEPA filters | was named Ventilatie met HEPA filters |
| 5.6 | Sprinkler and fire alarm | was named Sprinkler en BMI |
| 5.7 | Lift installation | was named Liftinstallatie |
| 5.8 | Nurse call system | was named Zuster-oproepsysteem |
| 5.9 | ICT cabling | was named ICT bekabeling |
| 6 | **6. Fit-out** | was named 6. Afbouw |
| 6.1 | Partition walls | was named Scheidingswanden |
| 6.2 | Finish ceilings and walls | was named Plafonds en wanden afwerken |
| 6.3 | Tiling, wet rooms | was named Tegelwerk natte ruimten |
| 6.4 | Screeds and floor finishes | was named Dekvloeren en vloerafwerking |
| 6.5 | Painting | was named Schilderwerk |
| 6.6 | Kitchens and pantry | was named Keukens en pantry |
| 6.7 | Install sanitary fittings | was named Sanitair plaatsen |
| 7 | **7. Handover** | was named 7. Oplevering |
| 7.1 | Construct external areas | was named Buitenterrein aanleggen |
| 7.2 | Room furnishing | was named Inrichting kamers |
| 7.3 | Test building services | was named Testen installaties |
| 7.4 | Handover | was named Oplevering |

## Version 3 (saved 2026-08-14)

Note of the change: chore(voorbeelden): examples/ en public/examples/ opnieuw gegenereerd

Last finish stays 2028-01-18.

Changed:

| ID | Task | Other |
| --- | --- | --- |
| 1.1 | Set up site | resources none → Civils and landscaping contractor |
| 1.3 | Fell and transplant trees | resources none → Civils and landscaping contractor |
| 2.1 | Pile driving, foundation piles | resources none → Piling contractor |
| 2.2 | Foundation beams | resources none → Structural works crew; Concrete C30/37 |
| 2.3 | Sewerage and underground pipework | resources none → Civils and landscaping contractor |
| 2.4 | Pour ground floor slab | resources none → Structural works crew; Concrete C30/37 |
| 3.1 | Ground floor load-bearing structure | resources none → Structural works crew; Mobile crane; Concrete C30/37 |
| 3.2 | Floor 1 concrete | resources none → Structural works crew; Mobile crane; Concrete C30/37 |
| 3.3 | Floor 2 concrete | resources none → Structural works crew; Mobile crane; Concrete C30/37 |
| 3.4 | Facade masonry | resources none → Bricklayers; Mobile crane |
| 3.5 | Internal walls, sand-lime brick | resources none → Bricklayers |
| 3.6 | Roof structure | resources none → Structural works crew; Mobile crane |
| 4.1 | Facade insulation and finish | resources none → Facade contractor |
| 4.2 | Window frames and screens | resources none → Facade contractor |
| 4.3 | Roof insulation and covering | resources none → Roofing contractor |
| 4.4 | Roof edges and rainwater drainage | resources none → Roofing contractor |
| 5.1 | Main electrical distribution | resources none → Electricians |
| 5.2 | Emergency power supply | resources none → Electricians |
| 5.3 | Oxygen and medical gases | resources none → Medical gas contractor |
| 5.4 | Heating and cooling | resources none → Mechanical fitters |
| 5.5 | Ventilation with HEPA filters | resources none → Mechanical fitters |
| 5.6 | Sprinkler and fire alarm | resources none → Mechanical fitters |
| 5.7 | Lift installation | resources none → Lift contractor |
| 5.8 | Nurse call system | resources none → Electricians |
| 5.9 | ICT cabling | resources none → Electricians |
| 6.1 | Partition walls | resources none → Fit-out crew |
| 6.2 | Finish ceilings and walls | resources none → Fit-out crew |
| 6.3 | Tiling, wet rooms | resources none → Tilers |
| 6.4 | Screeds and floor finishes | resources none → Fit-out crew |
| 6.5 | Painting | resources none → Painters |
| 6.6 | Kitchens and pantry | resources none → Fit-out crew |
| 6.7 | Install sanitary fittings | resources none → Mechanical fitters |
| 7.1 | Construct external areas | resources none → Civils and landscaping contractor |
| 7.2 | Room furnishing | resources none → Fit-out crew |
| 7.3 | Test building services | resources none → Commissioning engineer; Electricians; Mechanical fitters |
